Schedule from MS Project, 2018-11-14 to 2019-02-20, 9 hours a day.
MKushniryk

## Calendars

- Стандартный: Mon-Fri 09:00-13:00, 14:00-18:00; Sat-Sun off.

## Resources

| Resource |
| --- |
| Аналітик |
| Програміст |
| Спеціаліст по впровадженню |

## Schedule

| ID | WBS | Task | Type | Duration | Start | Finish | Predecessors | Baseline start | Baseline finish | Baseline duration | Total slack | Resources | Work |
| --- | --- | --- | --- | --- | --- | --- | --- | --- | --- | --- | --- | --- | --- |
| 1 | 1 | **Передпроектне дослідження** |  | 12.67d | 2018-11-14 | 2018-12-04 |  | 2018-11-14 | 2018-12-04 | 12.67d | 0d |  | 1032h |
| 2 | 1.1 | Збір даних про особливості господарської діяльності підприємства |  | 108h | 2018-11-14 | 2018-12-03 |  | 2018-11-14 | 2018-12-03 | 108h | 0d | Аналітик [400%]; Програміст [400%] | 864h |
| 3 | 1.2 | Визначення необхідної кількості автоматизованих робочих місць |  | 6h | 2018-12-03 | 2018-12-04 | 2, 4 | 2018-12-03 | 2018-12-04 | 6h | 0d | Аналітик [400%]; Програміст [400%]; Спеціаліст по впровадженню [400%] | 72h |
| 4 | 1.3 | Анкетування працівників користувачів системи |  | 24h | 2018-11-14 | 2018-11-16 |  | 2018-11-14 | 2018-11-16 | 24h | 9.33d | Спеціаліст по впровадженню [400%] | 96h |
| 5 | 2 | **Розробка і затвердження ТЗ** |  | 16.89d | 2018-12-04 | 2018-12-31 | 3 | 2018-12-04 | 2018-12-31 | 16.89d | 0d |  | 1008h |
| 6 | 2.1 | Виявлення необхідних доробок системи |  | 16h | 2018-12-04 | 2018-12-06 |  | 2018-12-04 | 2018-12-06 | 16h | 0d | Аналітик [400%]; Програміст [400%]; Спеціаліст по впровадженню [400%] | 192h |
| 7 | 2.2 | Написання ТЗ |  | 20h | 2018-12-06 | 2018-12-10 | 6 | 2018-12-06 | 2018-12-10 | 20h | 0d | Аналітик [400%]; Програміст [400%]; Спеціаліст по впровадженню [400%] | 240h |
| 8 | 2.3 | Узгодження ТЗ |  | 0.89d | 2018-12-10 | 2018-12-11 | 7 | 2018-12-10 | 2018-12-11 | 0.89d | 0d | Аналітик [400%]; Програміст [400%]; Спеціаліст по впровадженню [400%] | 96h |
| 9 | 2.4 | Програмна реалізація |  | 84h | 2018-12-11 | 2018-12-26 | 8 | 2018-12-11 | 2018-12-26 | 84h | 1.33d | Програміст [400%] | 336h |
| 10 | 2.5 | Тестування 1 |  | 12h | 2018-12-27 | 2018-12-31 | 9, 12 | 2018-12-27 | 2018-12-31 | 12h | 0d | Аналітик [400%]; Програміст [400%]; Спеціаліст по впровадженню [400%] | 144h |
| 11 | 3 | **Старт впровадження системи** |  | 19.11d | 2018-12-11 | 2019-01-10 | 8 | 2018-12-11 | 2019-01-10 | 19.11d | 0d |  | 1536h |
| 12 | 3.1 | Внесення і звірка первинних даних |  | 96h | 2018-12-11 | 2018-12-27 |  | 2018-12-11 | 2018-12-27 | 96h | 0d | Аналітик [400%]; Спеціаліст по впровадженню [400%] | 768h |
| 13 | 3.2 | Навчання користувачів роботи з системою та їх атестація |  | 24h | 2018-12-31 | 2019-01-03 | 10 | 2018-12-31 | 2019-01-03 | 24h | 0d | Аналітик [400%]; Програміст [400%]; Спеціаліст по впровадженню [400%] | 288h |
| 14 | 3.3 | Допомога користувачам в роботі з системою |  | 32h | 2019-01-03 | 2019-01-09 | 13 | 2019-01-03 | 2019-01-09 | 32h | 0d | Аналітик [400%]; Програміст [400%]; Спеціаліст по впровадженню [400%] | 384h |
| 15 | 3.4 | Переведення системи в дослідну експлуатацію |  | 8h | 2019-01-09 | 2019-01-10 | 14 | 2019-01-09 | 2019-01-10 | 8h | 0d | Аналітик [400%]; Програміст [400%]; Спеціаліст по впровадженню [400%] | 96h |
| 16 | 4 | **Дослідна експлуатація** |  | 19.56d | 2019-01-10 | 2019-02-11 | 11 | 2019-01-10 | 2019-02-11 | 19.56d | 0d |  | 1824h |
| 17 | 4.1 | Консультації користувачів |  | 56h | 2019-01-10 | 2019-01-21 |  | 2019-01-10 | 2019-01-21 | 56h | 0d | Аналітик [400%]; Програміст [400%]; Спеціаліст по впровадженню [400%] | 672h |
| 18 | 4.2 | Перевірка функціональності системи, виявлення зауважень |  | 64h | 2019-01-21 | 2019-01-31 | 17 | 2019-01-21 | 2019-01-31 | 64h | 0d | Аналітик [400%]; Програміст [400%]; Спеціаліст по впровадженню [400%] | 768h |
| 19 | 4.3 | Усунення виявлених зауважень |  | 48h | 2019-01-31 | 2019-02-08 | 18 | 2019-01-31 | 2019-02-08 | 48h | 0d | Програміст [400%] | 192h |
| 20 | 4.4 | Тестування 2 |  | 0.89d | 2019-02-08 | 2019-02-11 | 19, 21 | 2019-02-08 | 2019-02-11 | 0.89d | 0d | Аналітик [400%]; Програміст [400%]; Спеціаліст по впровадженню [400%] | 96h |
| 21 | 4.5 | Переклад системи в промислову експлуатацію |  | 12h | 2019-01-31 | 2019-02-01 | 18 | 2019-01-31 | 2019-02-01 | 12h | 4d | Аналітик [400%]; Спеціаліст по впровадженню [400%] | 96h |
| 22 | 5 | **Промислова експлуатація** |  | 6.67d | 2019-02-11 | 2019-02-20 | 16, 20 | 2019-02-11 | 2019-02-20 | 6.67d | 0d |  | 720h |
| 23 | 5.1 | Супровід системи |  | 60h | 2019-02-11 | 2019-02-20 |  | 2019-02-11 | 2019-02-20 | 60h | 0d | Аналітик [400%]; Програміст [400%]; Спеціаліст по впровадженню [400%] | 720h |
| 24 | 6 | Завершення проекту | milestone | 0h | 2019-02-20 | 2019-02-20 | 22 | 2019-02-20 | 2019-02-20 | 0h | 0d |  |  |
