# Боря23456

Schedule from MS Project, 2018-11-16 to 2019-08-02, costs in ₴, A marks actual dates.
MKushniryk

## Calendars

- Стандартный: Mon-Fri 09:00-13:00, 14:00-18:00; Sat-Sun off.

## Resources

| Resource | Rate |
| --- | --- |
| Кадры | 20 |
| аналитик №1 | 30 |
| программист №1 | 40 |
| программист №2 | 50 |
| Спец №1 | 40 |
| Спец №2 | 45 |
| Допомога | 30 |

## Schedule

| ID | WBS | Task | Duration | Start | Finish | Predecessors | Complete | Remaining | Actual start | Baseline start | Baseline finish | Baseline duration | Total slack | Free slack | Constraint | Resources | Work | Actual work | Cost | Baseline cost | Actual cost |
| --- | --- | --- | --- | --- | --- | --- | --- | --- | --- | --- | --- | --- | --- | --- | --- | --- | --- | --- | --- | --- | --- |
| 1 | 1 | **Предпроектное обследование** | 9d | 2019-05-02 A | 2019-05-14 | 24 | 91% | 0.78d |  | 2018-11-15 | 2018-11-27 | 9d |  |  |  |  | 83.54h | 75.96h | 2,466.2 | 2,360 | 2,254.8 |
| 2 | 1.1 | Сбор данных об особенностях хозяйственной деятельности предприятия | 73.44h | 2019-05-02 A | 2019-05-15 |  | 96% | 2.87h |  | 2018-11-15 | 2018-11-27 | 72h | -0.18d | 0d |  | аналитик №1 [50%]; Допомога | 73.44h | 70.56h | 2,203.2 | 2,160 | 2,116.8 |
| 3 | 1.2 | Определение необходимого количества автоматизированных рабочих мест | 2.5h | 2019-05-02 A | 2019-05-02 |  | 60% | 1h |  | 2018-11-15 | 2018-11-15 | 2h | 8.18d | 0d |  | Спец №1 [50%]; Кадры [50%]; Допомога | 4.5h | 3h | 135 | 120 | 90 |
| 4 | 1.3 | Анкетирование работников-пользователей системы | 5.6h | 2019-05-02 A | 2019-05-02 | 3 | 43% | 3.2h |  | 2018-11-15 | 2018-11-15 | 4h | 8.18d |  |  | Кадры [50%]; Допомога | 5.6h | 2.4h | 128 | 80 | 48 |
| 5 | 2 | **Разработка и утверждение ТЗ** | 7d | 2019-05-14 | 2019-05-22 | 1 | 12% | 6.14d | 2018-11-27 | 2018-11-27 | 2018-12-05 | 7d |  |  |  |  | 297.52h | 77.37h | 11,248.83 | 8,753.33 | 2,966.58 |
| 6 | 2.1 | Выявление необходимых доработок системы | 160.56h | 2018-11-27 A | 2019-01-02 |  | 13% | 138.96h |  | 2018-11-27 | 2018-12-05 | 54h | 100.39d |  |  | аналитик №1 [50%]; программист №1 [50%]; Спец №1 [50%]; Допомога | 194.4h | 64.8h | 6,912 | 5,940 | 2,376 |
| 7 | 2.2 | Написание ТЗ | 14.5h | 2018-11-27 A | 2018-11-28 |  | 38% | 9h |  | 2018-11-27 | 2018-11-28 | 10h | 64.87d | 0d |  | программист №2 [50%]; Спец №2 [50%]; Допомога | 24.5h | 11h | 1,085 | 950 | 522.5 |
| 8 | 2.3 | Согласование ТЗ | 38min | 2018-11-28 A | 2018-11-29 | 7 | 5% | 36min |  | 2018-11-28 | 2018-11-28 | 20min | 63.98d | 0d |  | аналитик №1 [50%]; программист №1 [50%]; программист №2 [50%]; Спец №1 [50%]; Спец №2 [50%]; Допомога | 1.97h | 0.17h | 77.33 | 68.33 | 6.83 |
| 9 | 2.4 | Программная реализация | 13.65h | 2018-11-28 A | 2018-12-03 | 8 | 3% | 13.3h |  | 2018-11-28 | 2018-11-29 | 7h | 63.98d |  |  | программист №1 [50%]; программист №2 [50%]; Спец №1 [50%]; Спец №2 [50%]; Допомога | 34.65h | 1.4h | 1,424.5 | 1,225 | 61.25 |
| 10 | 2.5 | Тестирование | 34h | 2019-05-14 | 2019-08-02 | 9 |  |  |  | 2018-11-29 | 2018-11-29 | 6h | -51.58d | 0d |  | программист №2 [50%]; Спец №2 [50%]; Допомога | 42h |  | 1,750 | 570 |  |
| 11 | 3 | **Старт внедрения системы** | 3d | 2019-05-22 | 2019-05-24 | 5 | 7% | 2.81d | 2018-12-05 | 2018-12-05 | 2018-12-07 | 3d |  |  |  |  | 142.14h | 19.98h | 5,229.2 | 4,415 | 755.9 |
| 12 | 3.1 | Внесение и сверка первоначальных данных | 31.8h | 2018-12-05 A | 2018-12-12 |  | 8% | 29.4h |  | 2018-12-05 | 2018-12-06 | 16h | 117.04d | 0d |  | аналитик №1 [50%]; программист №1 [50%]; программист №2 [50%]; Спец №1 [50%]; Допомога | 77.6h | 9.6h | 2,968 | 2,560 | 384 |
| 13 | 3.2 | Обучение пользователей работе с системой и их аттестация | 10.2h | 2018-12-05 A | 2018-12-06 |  | 18% | 8.4h |  | 2018-12-05 | 2018-12-05 | 6h | 121.65d |  |  | Кадры [50%]; программист №1 [50%]; Спец №2 [50%]; Допомога | 22.2h | 5.4h | 756 | 630 | 189 |
| 14 | 3.3 | Помощь пользователям в работе с системой | 40.6h | 2018-12-05 A | 2018-12-19 |  | 4% | 39h |  | 2018-12-05 | 2018-12-05 | 8h | 112.98d |  |  | Кадры [50%]; программист №2 [50%]; Спец №1 [50%]; Допомога | 30.4h | 4.8h | 1,072 | 880 | 176 |
| 15 | 3.4 | Перевод системы в опытную эксплуатацию | 7.54h | 2018-12-07 A | 2018-12-12 | 12 | 1% | 7.48h |  | 2018-12-07 | 2018-12-07 | 3h | 117.04d |  |  | аналитик №1 [50%]; Спец №1 [50%]; Спец №2 [50%]; Допомога | 11.94h | 0.18h | 433.2 | 345 | 6.9 |
| 16 | 4 | **Опытная эксплуатация** | 6d | 2019-05-24 | 2019-05-31 | 11 | 4% | 5.76d | 2018-12-07 | 2018-12-07 | 2018-12-14 | 6d |  |  |  |  | 182.17h | 11.97h | 6,455.1 | 4,740 | 485.1 |
| 17 | 4.1 | Консультации пользователей | 54.04h | 2018-12-07 A | 2018-12-20 |  | 4% | 52.08h |  | 2018-12-07 | 2018-12-12 | 28h | 113.89d | 0d |  | Кадры [50%]; Допомога | 54.04h | 1.96h | 1,341.2 | 560 | 39.2 |
| 18 | 4.2 | Проверка функциональности системы, выявление замечаний | 64.55h | 2018-12-07 A | 2018-12-24 |  | 3% | 62.35h |  | 2018-12-07 | 2018-12-11 | 22h | 111.27d | 0d |  | программист №1 [50%]; программист №2 [50%]; Спец №1 [50%]; Допомога | 85.8h | 6.6h | 3,454 | 2,860 | 286 |
| 19 | 4.3 | Устранение выявленных замечаний | 14.4h | 2018-12-12 A | 2018-12-26 | 17, 18 | 11% | 12.8h |  | 2018-12-12 | 2018-12-13 | 8h | 111.27d | 0d |  | программист №2 [50%]; Спец №2 [50%]; Допомога | 22.4h | 3.2h | 952 | 760 | 152 |
| 20 | 4.4 | Тестирование | 5.97h | 2018-12-13 A | 2018-12-27 | 19 | 1% | 5.94h |  | 2018-12-13 | 2018-12-13 | 3h | 111.27d | 0d |  | аналитик №1 [50%]; программист №1 [50%]; Спец №1 [50%]; Допомога | 11.97h | 0.09h | 419.1 | 330 | 3.3 |
| 21 | 4.5 | Перевод системы в промышленную эксплуатацию | 3.96h | 2018-12-13 A | 2018-12-27 | 20 | 1% | 3.92h |  | 2018-12-13 | 2018-12-14 | 2h | 111.27d |  |  | Спец №1 [50%]; Спец №2 [50%]; аналитик №1 [50%]; Допомога | 7.96h | 0.12h | 288.8 | 230 | 4.6 |
| 22 | 5 | **Промышленная эксплуатация** | 2d | 2019-05-31 | 2019-06-03 | 16 | 43% | 1.14d | 2018-12-14 | 2018-12-14 | 2018-12-17 | 2d |  |  |  |  | 57.6h | 32.4h | 2,133 | 2,025 | 1,215 |
| 23 | 5.1 | Сопровождение системы | 12.6h | 2018-12-14 A | 2018-12-17 |  | 43% | 7.2h |  | 2018-12-14 | 2018-12-17 | 9h | 120.42d |  |  | аналитик №1 [50%]; Кадры [50%]; программист №1 [50%]; программист №2 [50%]; Спец №1 [50%]; Спец №2 [50%]; Допомога | 57.6h | 32.4h | 2,133 | 2,025 | 1,215 |
| 24 | 6 | Завершение проекта | 1d | 2019-06-03 | 2019-06-03 |  |  |  |  | 2018-12-17 | 2018-12-17 | 1d | -14.6d | 0d | start no earlier than 2019-06-03 |  |  |  |  |  |  |

| ID | WBS | Task | Duration | Start | Finish | Baseline start | Baseline finish | Baseline duration | Total slack | Constraint |
| --- | --- | --- | --- | --- | --- | --- | --- | --- | --- | --- |
| 25 | 7 | **Еженедельный митинг** | 23d | 2019-05-02 | 2019-06-03 | 2018-11-16 | 2018-12-14 | 20.12d |  |  |
| 26 | 7.1 | Еженедельный митинг 1 | 1h | 2018-11-16 | 2018-11-16 | 2018-11-16 | 2018-11-16 | 1h | 185.46d | start no earlier than 2018-11-16 |
| 27 | 7.2 | Еженедельный митинг 2 | 1h | 2018-11-23 | 2018-11-23 | 2018-11-23 | 2018-11-23 | 1h | 180.46d | start no earlier than 2018-11-23 |
| 28 | 7.3 | Еженедельный митинг 3 | 1h | 2018-11-30 | 2018-11-30 | 2018-11-30 | 2018-11-30 | 1h | 175.46d | start no earlier than 2018-11-30 |
| 29 | 7.4 | Еженедельный митинг 4 | 1h | 2018-12-07 | 2018-12-07 | 2018-12-07 | 2018-12-07 | 1h | 170.46d | start no earlier than 2018-12-07 |
| 30 | 7.5 | Еженедельный митинг 5 | 1h | 2018-12-14 | 2018-12-14 | 2018-12-14 | 2018-12-14 | 1h | 165.46d | start no earlier than 2018-12-14 |
